| id | number | name | order_id | duration | capacity_multiplier | capacity_events | duration_hours | duration_minutes | duration_text | early_start | early_finish | late_start | late_finish | total_float | free_float | hours_per_day | duration_days | early_start_day | early_finish_day | late_start_day | late_finish_day | total_float_days | free_float_days | start_datetime | finish_datetime | is_critical |
| --- | --- | --- | --- | --- | --- | --- | --- | --- | --- | --- | --- | --- | --- | --- | --- | --- | --- | --- | --- | --- | --- | --- | --- | --- | --- | --- |
| 675f9eae-dece-48df-af83-7875b2f15a19 | 28 | Мост двухпролётный · Установка деформационных швов | 8707dc41-153d-4fb5-a6e6-3bb24a71ff41 | 25 | 0 | 522acd6f-b1f9-40f6-ae9f-885f52f7d79d breakdown 0  1 Простой: нет сварочных материалов, 522acd6f-b1f9-40f6-ae9f-885f52f7d79d breakdown 0  1 Простой: нет сварочных материалов, 522acd6f-b1f9-40f6-ae9f-885f52f7d79d breakdown 0  1 Простой: нет сварочных материалов, 522acd6f-b1f9-40f6-ae9f-885f52f7d79d breakdown 0  1 Простой: нет сварочных материалов | 25 | 1500 | 3 дн 1 ч | 480 | 505 | 1307.7777777777778 | 1332.7777777777778 | 827.7777777777778 | 0 | 8 | 3.125 | 60 | 63.125 | 163.4722 | 166.5972 | 103.4722 | 0 | 2026-11-17T08:00 | 2026-11-20T11:00 |  |
| 74556298-7bb9-47b0-aada-56fd2b3e2650 | 29 | Левый пролёт · Надвижка левого пролёта | 8707dc41-153d-4fb5-a6e6-3bb24a71ff41 | 266.6666666666667 | 0.3 |  | 266.6667 | 16000 | 33 дн 2 ч 40 мин | 505 | 771.6666666666667 | 1332.7777777777778 | 1599.4444444444446 | 827.7777777777778 | 0 | 8 | 33.3333 | 63.125 | 96.4583 | 166.5972 | 199.9306 | 103.4722 | 0 | 2026-11-20T11:00 | 2026-12-23T19:00 |  |
| b6d974f0-d106-4861-933c-8b5a28637868 | 33 | Левый пролёт · Омоноличивание стыков | 8707dc41-153d-4fb5-a6e6-3bb24a71ff41 | 88.8888888888889 | 0.45 |  | 88.8889 | 5333 | 11 дн 53 мин | 771.6666666666667 | 860.5555555555557 | 1599.4444444444446 | 1688.3333333333335 | 827.7777777777778 | 0 | 8 | 11.1111 | 96.4583 | 107.5694 | 199.9306 | 211.0417 | 103.4722 | 0 | 2026-12-23T19:00 | 2027-01-03T21:40 |  |
| 811f18f0-ac89-44d7-acee-32c38a749cf3 | 8 | Закупка: Бетон мостовой В35 | 8707dc41-153d-4fb5-a6e6-3bb24a71ff41 | 72 | 1 |  | 72 | 4320 | 9 дн | 0 | 72 | 1260.7777777777778 | 1332.7777777777778 | 1260.7777777777778 | 433 | 8 | 9 | 0 | 9 | 157.5972 | 166.5972 | 157.5972 | 54.125 | 2026-09-18T08:00 | 2026-09-27T08:00 |  |
| a276a9ea-0cfb-4a65-b3d1-5266bfd794bc | 34 | МК левого пролёта · Укрупнительная сборка МК левого пролёта | 8707dc41-153d-4fb5-a6e6-3bb24a71ff41 | 233.33333333333334 | 0.3 |  | 233.3333 | 14000 | 29 дн 1 ч 20 мин | 860.5555555555557 | 1093.888888888889 | 1688.3333333333335 | 1921.6666666666667 | 827.7777777777778 | 0 | 8 | 29.1667 | 107.5694 | 136.7361 | 211.0417 | 240.2083 | 103.4722 | 0 | 2027-01-03T21:40 | 2027-02-02T01:40 |  |
| 200400d3-a491-405f-a216-2ac802af9e7b | 37 | МК левого пролёта · Сварка и контроль стыков | 8707dc41-153d-4fb5-a6e6-3bb24a71ff41 | 260 | 0.25 |  | 260 | 15600 | 32 дн 4 ч | 1093.888888888889 | 1353.888888888889 | 1921.6666666666667 | 2181.6666666666665 | 827.7777777777778 | 0 | 8 | 32.5 | 136.7361 | 169.2361 | 240.2083 | 272.7083 | 103.4722 | 0 | 2027-02-02T01:40 | 2027-03-06T13:40 |  |
| c1ab8bf3-a648-4dd4-87aa-deb36f5a508b | 40 | МК левого пролёта · Антикоррозийная защита | 8707dc41-153d-4fb5-a6e6-3bb24a71ff41 | 140 | 0.25 |  | 140 | 8400 | 17 дн 4 ч | 1353.888888888889 | 1493.888888888889 | 2181.6666666666665 | 2321.6666666666665 | 827.7777777777778 | 0 | 8 | 17.5 | 169.2361 | 186.7361 | 272.7083 | 290.2083 | 103.4722 | 0 | 2027-03-06T13:40 | 2027-03-24T01:40 |  |
| 2c7b4f1b-b730-4952-9d97-f18d5ac1fe77 | 22 | Закупка: Сталь конструкционная 09Г2С | 8707dc41-153d-4fb5-a6e6-3bb24a71ff41 | 288 | 1 |  | 288 | 17280 | 36 дн | 0 | 288 | 1400.3333333333335 | 1688.3333333333335 | 1400.3333333333335 | 572.5555555555557 | 8 | 36 | 0 | 36 | 175.0417 | 211.0417 | 175.0417 | 71.5694 | 2026-09-18T08:00 | 2026-10-24T08:00 |  |
| 9b4efc4c-55bd-4074-aa05-8373b7fe3655 | 1 | Закупка: Антикоррозийное покрытие | 8707dc41-153d-4fb5-a6e6-3bb24a71ff41 | 120 | 1 |  | 120 | 7200 | 15 дн | 0 | 120 | 1568.3333333333335 | 1688.3333333333335 | 1568.3333333333335 | 740.5555555555557 | 8 | 15 | 0 | 15 | 196.0417 | 211.0417 | 196.0417 | 92.5694 | 2026-09-18T08:00 | 2026-10-03T08:00 |  |
| 67845e46-7cfc-46a0-9f64-62ff55b781ed | 41 | Правый пролёт · Надвижка правого пролёта | 8707dc41-153d-4fb5-a6e6-3bb24a71ff41 | 140 | 0.5 |  | 140 | 8400 | 17 дн 4 ч | 1493.888888888889 | 1633.888888888889 | 2321.6666666666665 | 2461.6666666666665 | 827.7777777777778 | 0 | 8 | 17.5 | 186.7361 | 204.2361 | 290.2083 | 307.7083 | 103.4722 | 0 | 2027-03-24T01:40 | 2027-04-10T13:40 |  |
| 9e4311b1-989e-44a7-af85-3417012cf341 | 43 | МК правого пролёта · Укрупнительная сборка МК правого пролёта | 8707dc41-153d-4fb5-a6e6-3bb24a71ff41 | 216.66666666666669 | 0.3 |  | 216.6667 | 13000 | 27 дн 40 мин | 1633.888888888889 | 1850.5555555555557 | 2461.6666666666665 | 2678.3333333333335 | 827.7777777777778 | 0 | 8 | 27.0833 | 204.2361 | 231.3194 | 307.7083 | 334.7917 | 103.4722 | 0 | 2027-04-10T13:40 | 2027-05-07T15:40 |  |
| 711ef1e0-ce80-4751-a231-3c970a97f7d0 | 45 | МК правого пролёта · Сварка и контроль стыков | 8707dc41-153d-4fb5-a6e6-3bb24a71ff41 | 240 | 0.25 |  | 240 | 14400 | 30 дн | 1850.5555555555557 | 2090.5555555555557 | 2678.3333333333335 | 2918.3333333333335 | 827.7777777777778 | 0 | 8 | 30 | 231.3194 | 261.3194 | 334.7917 | 364.7917 | 103.4722 | 0 | 2027-05-07T15:40 | 2027-06-06T15:40 |  |
| 51b42293-0876-4d3d-b612-f7885aa41213 | 11 | Закупка: Болты высокопрочные | 8707dc41-153d-4fb5-a6e6-3bb24a71ff41 | 216 | 1 |  | 216 | 12960 | 27 дн | 0 | 216 | 1472.3333333333335 | 1688.3333333333335 | 1472.3333333333335 | 644.5555555555557 | 8 | 27 | 0 | 27 | 184.0417 | 211.0417 | 184.0417 | 80.5694 | 2026-09-18T08:00 | 2026-10-15T08:00 |  |
| 75fc2ac3-5b43-4d5c-827a-26df8393864e | 48 | Мостовое полотно и обустройство · Устройство покрытия | 8707dc41-153d-4fb5-a6e6-3bb24a71ff41 | 208.33333333333334 | 0.24 |  | 208.3333 | 12500 | 26 дн 20 мин | 2090.5555555555557 | 2298.888888888889 | 2918.3333333333335 | 3126.666666666667 | 827.7777777777778 | 0 | 8 | 26.0417 | 261.3194 | 287.3611 | 364.7917 | 390.8333 | 103.4722 | 0 | 2027-06-06T15:40 | 2027-07-02T16:40 |  |
| 7041b6b7-b8b2-447a-9b8d-50fff2dab351 | 51 | Мостовое полотно и обустройство · Гидроизоляция покрытия | 8707dc41-153d-4fb5-a6e6-3bb24a71ff41 | 125 | 0.24 |  | 125 | 7500 | 15 дн 5 ч | 2298.888888888889 | 2423.888888888889 | 3126.666666666667 | 3251.666666666667 | 827.7777777777778 | 0 | 8 | 15.625 | 287.3611 | 302.9861 | 390.8333 | 406.4583 | 103.4722 | 0 | 2027-07-02T16:40 | 2027-07-18T07:40 |  |
| 1a54c08b-beee-4bb2-9f3b-9c53ec56d915 | 53 | Мостовое полотно и обустройство · Монтаж ограждений | 8707dc41-153d-4fb5-a6e6-3bb24a71ff41 | 145.83333333333334 | 0.24 |  | 145.8333 | 8750 | 18 дн 1 ч 50 мин | 2423.888888888889 | 2569.722222222222 | 3251.666666666667 | 3397.5 | 827.7777777777778 | 0 | 8 | 18.2292 | 302.9861 | 321.2153 | 406.4583 | 424.6875 | 103.4722 | 0 | 2027-07-18T07:40 | 2027-08-05T13:10 |  |
| 04a3b1fe-43b8-4f65-aace-15726d5f6eee | 56 | Мостовое полотно и обустройство · Монтаж шумозащитных экранов | 8707dc41-153d-4fb5-a6e6-3bb24a71ff41 | 160 | 0.25 |  | 160 | 9600 | 20 дн | 2569.722222222222 | 2729.722222222222 | 3397.5 | 3557.5 | 827.7777777777778 | 0 | 8 | 20 | 321.2153 | 341.2153 | 424.6875 | 444.6875 | 103.4722 | 0 | 2027-08-05T13:10 | 2027-08-25T13:10 |  |
| f40365e3-47c1-4331-a4ff-56dd7631d02b | 4 | Закупка: Асфальтобетон | 8707dc41-153d-4fb5-a6e6-3bb24a71ff41 | 48 | 1 |  | 48 | 2880 | 6 дн | 0 | 48 | 2870.3333333333335 | 2918.3333333333335 | 2870.3333333333335 | 2042.5555555555557 | 8 | 6 | 0 | 6 | 358.7917 | 364.7917 | 358.7917 | 255.3194 | 2026-09-18T08:00 | 2026-09-24T08:00 |  |
| 852e2e90-dcb9-4c0e-b2e0-724a806366f4 | 12 | Закупка: Гидроизоляция рулонная | 8707dc41-153d-4fb5-a6e6-3bb24a71ff41 | 96 | 1 |  | 96 | 5760 | 12 дн | 0 | 96 | 2822.3333333333335 | 2918.3333333333335 | 2822.3333333333335 | 1994.5555555555557 | 8 | 12 | 0 | 12 | 352.7917 | 364.7917 | 352.7917 | 249.3194 | 2026-09-18T08:00 | 2026-09-30T08:00 |  |
| 6ded163e-be3e-4e8f-bee8-62bacebb295d | 17 | Закупка: Ограждение барьерное | 8707dc41-153d-4fb5-a6e6-3bb24a71ff41 | 144 | 1 |  | 144 | 8640 | 18 дн | 0 | 144 | 2774.3333333333335 | 2918.3333333333335 | 2774.3333333333335 | 1946.5555555555557 | 8 | 18 | 0 | 18 | 346.7917 | 364.7917 | 346.7917 | 243.3194 | 2026-09-18T08:00 | 2026-10-06T08:00 |  |
| d15802c1-705d-4a83-8fce-0138dcb5061d | 25 | Закупка: Шумозащитные экраны | 8707dc41-153d-4fb5-a6e6-3bb24a71ff41 | 360 | 1 |  | 360 | 21600 | 45 дн | 0 | 360 | 2558.3333333333335 | 2918.3333333333335 | 2558.3333333333335 | 1730.5555555555557 | 8 | 45 | 0 | 45 | 319.7917 | 364.7917 | 319.7917 | 216.3194 | 2026-09-18T08:00 | 2026-11-02T08:00 |  |
| ae341332-1877-47c9-9ac1-f53726975851 | 13 | Закупка: Деформационные швы | 8707dc41-153d-4fb5-a6e6-3bb24a71ff41 | 480 | 1 |  | 480 | 28800 | 60 дн | 0 | 480 | 827.7777777777778 | 1307.7777777777778 | 827.7777777777778 | 0 | 8 | 60 | 0 | 60 | 103.4722 | 163.4722 | 103.4722 | 0 | 2026-09-18T08:00 | 2026-11-17T08:00 |  |
| 13101754-1550-46f6-87f4-58721d4d1b74 | 57 | Опоры моста · Подготовка площадки и геодезия | 8707dc41-153d-4fb5-a6e6-3bb24a71ff41 | 33.333333333333336 | 0.45 |  | 33.3333 | 2000 | 4 дн 1 ч 20 мин | 2729.722222222222 | 2763.0555555555557 | 3557.5 | 3590.8333333333335 | 827.7777777777778 | 0 | 8 | 4.1667 | 341.2153 | 345.3819 | 444.6875 | 448.8542 | 103.4722 | 0 | 2027-08-25T13:10 | 2027-08-29T17:10 |  |
| db1552ab-5657-470c-b2f0-45a5bcd7178d | 59 | Опоры моста · Забивка свай | 8707dc41-153d-4fb5-a6e6-3bb24a71ff41 | 120 | 0.5 |  | 120 | 7200 | 15 дн | 2763.0555555555557 | 2883.0555555555557 | 3590.8333333333335 | 3710.8333333333335 | 827.7777777777778 | 0 | 8 | 15 | 345.3819 | 360.3819 | 448.8542 | 463.8542 | 103.4722 | 0 | 2027-08-29T17:10 | 2027-09-13T17:10 |  |
| 31de2007-5054-40c1-84ba-560754bca679 | 60 | Опоры моста · Бетонирование опор | 8707dc41-153d-4fb5-a6e6-3bb24a71ff41 | 177.7777777777778 | 0.45 |  | 177.7778 | 10667 | 22 дн 1 ч 47 мин | 2883.0555555555557 | 3060.8333333333335 | 3710.8333333333335 | 3888.6111111111113 | 827.7777777777778 | 0 | 8 | 22.2222 | 360.3819 | 382.6042 | 463.8542 | 486.0764 | 103.4722 | 0 | 2027-09-13T17:10 | 2027-10-05T22:30 |  |
| 15e8dfca-20cc-4242-a628-3f3467fd71c8 | 63 | Опоры моста · Устройство ригелей | 8707dc41-153d-4fb5-a6e6-3bb24a71ff41 | 80 | 0.5 |  | 80 | 4800 | 10 дн | 3060.8333333333335 | 3140.8333333333335 | 3888.6111111111113 | 3968.6111111111113 | 827.7777777777778 | 827.7777777777778 | 8 | 10 | 382.6042 | 392.6042 | 486.0764 | 496.0764 | 103.4722 | 103.4722 | 2027-10-05T22:30 | 2027-10-15T22:30 |  |
| 32721736-4c65-4f9c-b785-7af17b0c6e23 | 7 | Закупка: Бетон М400 | 8707dc41-153d-4fb5-a6e6-3bb24a71ff41 | 48 | 1 |  | 48 | 2880 | 6 дн | 0 | 48 | 2383.9444444444443 | 2431.9444444444443 | 2383.9444444444443 | 2198.666666666667 | 8 | 6 | 0 | 6 | 297.9931 | 303.9931 | 297.9931 | 274.8333 | 2026-09-18T08:00 | 2026-09-24T08:00 |  |
| 88fb53e3-6110-4ae2-9426-ab5285fce1b1 | 18 | Закупка: Опалубка щитовая | 8707dc41-153d-4fb5-a6e6-3bb24a71ff41 | 192 | 1 |  | 192 | 11520 | 24 дн | 0 | 192 | 3365.5 | 3557.5 | 3365.5 | 2537.722222222222 | 8 | 24 | 0 | 24 | 420.6875 | 444.6875 | 420.6875 | 317.2153 | 2026-09-18T08:00 | 2026-10-12T08:00 |  |
| 510b2585-bbff-4602-a03f-3ec952b66717 | 32 | Усиление опор · Демонтаж старой кладки и подготовка | 8707dc41-153d-4fb5-a6e6-3bb24a71ff41 | 266.6666666666667 | 0.45 |  | 266.6667 | 16000 | 33 дн 2 ч 40 мин | 720 | 986.6666666666667 | 720 | 986.6666666666667 | 0 | 0 | 8 | 33.3333 | 90 | 123.3333 | 90 | 123.3333 | 0 | 0 | 2026-12-17T08:00 | 2027-01-19T16:00 | True |
| a4eb645e-9400-40c2-a7f6-cdd1a9775480 | 35 | Усиление опор · Инъектирование и ремонт бетона | 8707dc41-153d-4fb5-a6e6-3bb24a71ff41 | 344.44444444444446 | 0.45 |  | 344.4444 | 20667 | 43 дн 27 мин | 986.6666666666667 | 1331.111111111111 | 986.6666666666667 | 1331.111111111111 | 0 | 0 | 8 | 43.0556 | 123.3333 | 166.3889 | 123.3333 | 166.3889 | 0 | 0 | 2027-01-19T16:00 | 2027-03-03T17:20 | True |
| 5b0234d8-bd63-4f96-95ec-b263830a2a73 | 39 | Усиление опор · Усиление арматурного каркаса | 8707dc41-153d-4fb5-a6e6-3bb24a71ff41 | 440 | 0.25 |  | 440 | 26400 | 55 дн | 1331.111111111111 | 1771.111111111111 | 1331.111111111111 | 1771.111111111111 | 0 | 0 | 8 | 55 | 166.3889 | 221.3889 | 166.3889 | 221.3889 | 0 | 0 | 2027-03-03T17:20 | 2027-04-27T17:20 | True |
| cc986f78-5df0-4543-94fc-f16fe77edd0d | 10 | Закупка: Бетон ремонтный | 8707dc41-153d-4fb5-a6e6-3bb24a71ff41 | 240 | 1 |  | 240 | 14400 | 30 дн | 0 | 240 | 480 | 720 | 480 | 480 | 8 | 30 | 0 | 30 | 60 | 90 | 60 | 60 | 2026-09-18T08:00 | 2026-10-18T08:00 |  |
| 7e7c1043-1686-493b-85e4-b46e0d0e0546 | 3 | Закупка: Арматура композитная | 8707dc41-153d-4fb5-a6e6-3bb24a71ff41 | 600 | 1 |  | 600 | 36000 | 75 дн | 0 | 600 | 120 | 720 | 120 | 120 | 8 | 75 | 0 | 75 | 15 | 90 | 15 | 15 | 2026-09-18T08:00 | 2026-12-02T08:00 |  |
| f36d98af-4c93-4852-93c5-7eb9b82d843a | 14 | Закупка: Инъекционные составы | 8707dc41-153d-4fb5-a6e6-3bb24a71ff41 | 720 | 1 |  | 720 | 43200 | 90 дн | 0 | 720 | 0 | 720 | 0 | 0 | 8 | 90 | 0 | 90 | 0 | 90 | 0 | 0 | 2026-09-18T08:00 | 2026-12-17T08:00 | True |
| 08f3e7e6-5fe5-4b6f-a82f-32b3e89767b6 | 44 | Замена пролётного строения · Демонтаж старого пролётного строения | 8707dc41-153d-4fb5-a6e6-3bb24a71ff41 | 180 | 0.5 |  | 180 | 10800 | 22 дн 4 ч | 1771.111111111111 | 1951.111111111111 | 1771.111111111111 | 1951.111111111111 | 0 | 0 | 8 | 22.5 | 221.3889 | 243.8889 | 221.3889 | 243.8889 | 0 | 0 | 2027-04-27T17:20 | 2027-05-20T05:20 | True |
| b97e52e5-708c-44f8-9b63-10c50740d83b | 47 | Замена пролётного строения · Монтаж новых блоков пролёта | 8707dc41-153d-4fb5-a6e6-3bb24a71ff41 | 550 | 0.3 |  | 550 | 33000 | 68 дн 6 ч | 1951.111111111111 | 2501.1111111111113 | 1951.111111111111 | 2501.1111111111113 | 0 | 0 | 8 | 68.75 | 243.8889 | 312.6389 | 243.8889 | 312.6389 | 0 | 0 | 2027-05-20T05:20 | 2027-07-27T23:20 | True |
| 8fa439da-dd9b-4cb0-babf-c9f38f6c0bb7 | 54 | Замена пролётного строения · Сварка и металлизация покрытия | 8707dc41-153d-4fb5-a6e6-3bb24a71ff41 | 540 | 0.25 |  | 540 | 32400 | 67 дн 4 ч | 2501.1111111111113 | 3041.1111111111113 | 2501.1111111111113 | 3041.1111111111113 | 0 | 0 | 8 | 67.5 | 312.6389 | 380.1389 | 312.6389 | 380.1389 | 0 | 0 | 2027-07-27T23:20 | 2027-10-03T11:20 | True |
| f0f8a90b-77db-4bc3-aca6-42aee9777f9e | 62 | Дорожная одежда и обустройство · Устройство щебёночного основания | 8707dc41-153d-4fb5-a6e6-3bb24a71ff41 | 333.33333333333337 | 0.24 |  | 333.3333 | 20000 | 41 дн 5 ч 20 мин | 3041.1111111111113 | 3374.4444444444443 | 3041.1111111111113 | 3374.4444444444443 | 0 | 0 | 8 | 41.6667 | 380.1389 | 421.8056 | 380.1389 | 421.8056 | 0 | 0 | 2027-10-03T11:20 | 2027-11-14T03:20 | True |
| 4566eef6-dde5-4cc5-bb3c-380a4b91bf2e | 65 | Дорожная одежда и обустройство · Укладка ЩМА и уплотнение | 8707dc41-153d-4fb5-a6e6-3bb24a71ff41 | 270.83333333333337 | 0.24 |  | 270.8333 | 16250 | 33 дн 6 ч 50 мин | 3374.4444444444443 | 3645.277777777778 | 3374.4444444444443 | 3645.277777777778 | 0 | 0 | 8 | 33.8542 | 421.8056 | 455.6597 | 421.8056 | 455.6597 | 0 | 0 | 2027-11-14T03:20 | 2027-12-17T23:50 | True |
| 9b1d584d-b992-4aaf-908a-7c3779a1c99d | 68 | Дорожная одежда и обустройство · Монтаж усиленного ограждения | 8707dc41-153d-4fb5-a6e6-3bb24a71ff41 | 240 | 0.25 |  | 240 | 14400 | 30 дн | 3645.277777777778 | 3885.277777777778 | 3645.277777777778 | 3885.277777777778 | 0 | 0 | 8 | 30 | 455.6597 | 485.6597 | 455.6597 | 485.6597 | 0 | 0 | 2027-12-17T23:50 | 2028-01-16T23:50 | True |
| 73c7bf03-28b0-4430-a1eb-a3ceb530b413 | 70 | Дорожная одежда и обустройство · Нанесение разметки и сдача | 8707dc41-153d-4fb5-a6e6-3bb24a71ff41 | 83.33333333333334 | 0.24 |  | 83.3333 | 5000 | 10 дн 3 ч 20 мин | 3885.277777777778 | 3968.6111111111113 | 3885.277777777778 | 3968.6111111111113 | 0 | 0 | 8 | 10.4167 | 485.6597 | 496.0764 | 485.6597 | 496.0764 | 0 | 0 | 2028-01-16T23:50 | 2028-01-27T09:50 | True |
| f66e7170-4254-4f1e-a8d6-625a67d11eb1 | 26 | Закупка: Щебёночная смесь | 8707dc41-153d-4fb5-a6e6-3bb24a71ff41 | 96 | 1 |  | 96 | 5760 | 12 дн | 0 | 96 | 2945.1111111111113 | 3041.1111111111113 | 2945.1111111111113 | 2945.1111111111113 | 8 | 12 | 0 | 12 | 368.1389 | 380.1389 | 368.1389 | 368.1389 | 2026-09-18T08:00 | 2026-09-30T08:00 |  |
| 5effc8d7-01b5-49fb-a185-14d6cb370ab1 | 6 | Закупка: Барьерное ограждение усиленное | 8707dc41-153d-4fb5-a6e6-3bb24a71ff41 | 432 | 1 |  | 432 | 25920 | 54 дн | 0 | 432 | 2609.1111111111113 | 3041.1111111111113 | 2609.1111111111113 | 2609.1111111111113 | 8 | 54 | 0 | 54 | 326.1389 | 380.1389 | 326.1389 | 326.1389 | 2026-09-18T08:00 | 2026-11-11T08:00 |  |
| c058e2a6-4b40-4d1c-b88e-1c9e0c4048fb | 27 | Опоры руслового моста · Погружение свай-оболочек | 8707dc41-153d-4fb5-a6e6-3bb24a71ff41 | 170 | 0.5 |  | 170 | 10200 | 21 дн 2 ч | 336 | 506 | 557.5 | 727.5 | 221.49999999999997 | 0 | 8 | 21.25 | 42 | 63.25 | 69.6875 | 90.9375 | 27.6875 | 0 | 2026-10-30T08:00 | 2026-11-20T14:00 |  |
| 66be61e3-b47f-4129-8ca6-e52577a182f9 | 30 | Опоры руслового моста · Подводное бетонирование опор | 8707dc41-153d-4fb5-a6e6-3bb24a71ff41 | 177.7777777777778 | 0.45 |  | 177.7778 | 10667 | 22 дн 1 ч 47 мин | 506 | 683.7777777777778 | 727.5 | 905.2777777777778 | 221.49999999999997 | 36.2222222222222 | 8 | 22.2222 | 63.25 | 85.4722 | 90.9375 | 113.1597 | 27.6875 | 4.5278 | 2026-11-20T14:00 | 2026-12-12T19:20 |  |
| c68fe947-e98e-43ad-a072-382e83549619 | 21 | Закупка: Сваи-оболочки | 8707dc41-153d-4fb5-a6e6-3bb24a71ff41 | 336 | 1 |  | 336 | 20160 | 42 дн | 0 | 336 | 221.49999999999997 | 557.5 | 221.49999999999997 | 0 | 8 | 42 | 0 | 42 | 27.6875 | 69.6875 | 27.6875 | 0 | 2026-09-18T08:00 | 2026-10-30T08:00 |  |
| 176f20b4-377f-4b5c-942b-86ac6e246cbd | 9 | Закупка: Бетон подводный В30 | 8707dc41-153d-4fb5-a6e6-3bb24a71ff41 | 72 | 1 |  | 72 | 4320 | 9 дн | 0 | 72 | 485.5 | 557.5 | 485.5 | 264 | 8 | 9 | 0 | 9 | 60.6875 | 69.6875 | 60.6875 | 33 | 2026-09-18T08:00 | 2026-09-27T08:00 |  |
| 5d213b37-45dd-4099-9071-ae2b679b63e4 | 31 | Пролёт руслового моста · Надвижка руслового пролёта | 8707dc41-153d-4fb5-a6e6-3bb24a71ff41 | 333.33333333333337 | 0.3 |  | 333.3333 | 20000 | 41 дн 5 ч 20 мин | 720 | 1053.3333333333333 | 905.2777777777778 | 1238.611111111111 | 185.27777777777777 | 0 | 8 | 41.6667 | 90 | 131.6667 | 113.1597 | 154.8264 | 23.1597 | 0 | 2026-12-17T08:00 | 2027-01-28T00:00 |  |
| 12753597-82fc-48c8-8e65-39a82164b42b | 36 | Пролёт руслового моста · Натяжение канатов | 8707dc41-153d-4fb5-a6e6-3bb24a71ff41 | 200 | 0.25 |  | 200 | 12000 | 25 дн | 1053.3333333333333 | 1253.3333333333333 | 1238.611111111111 | 1438.611111111111 | 185.27777777777777 | 0 | 8 | 25 | 131.6667 | 156.6667 | 154.8264 | 179.8264 | 23.1597 | 0 | 2027-01-28T00:00 | 2027-02-22T00:00 |  |
| 44a5261d-8576-4423-a173-46cb73ca29fc | 15 | Закупка: Канаты напрягаемые | 8707dc41-153d-4fb5-a6e6-3bb24a71ff41 | 720 | 1 |  | 720 | 43200 | 90 дн | 0 | 720 | 185.27777777777777 | 905.2777777777778 | 185.27777777777777 | 0 | 8 | 90 | 0 | 90 | 23.1597 | 113.1597 | 23.1597 | 0 | 2026-09-18T08:00 | 2026-12-17T08:00 |  |
| 59ae4096-2714-4a08-8ac6-35f81d5dc686 | 38 | МК руслового пролёта · Изготовление МК руслового пролёта | 8707dc41-153d-4fb5-a6e6-3bb24a71ff41 | 316.6666666666667 | 0.3 |  | 316.6667 | 19000 | 39 дн 4 ч 40 мин | 1253.3333333333333 | 1570 | 1438.611111111111 | 1755.2777777777778 | 185.27777777777777 | 0 | 8 | 39.5833 | 156.6667 | 196.25 | 179.8264 | 219.4097 | 23.1597 | 0 | 2027-02-22T00:00 | 2027-04-02T14:00 |  |
| 93c5440b-4958-45b5-b496-1e7a86e2f59b | 42 | МК руслового пролёта · Сварка и металлизация МК | 8707dc41-153d-4fb5-a6e6-3bb24a71ff41 | 320 | 0.25 |  | 320 | 19200 | 40 дн | 1570 | 1890 | 1755.2777777777778 | 2075.277777777778 | 185.27777777777777 | 0 | 8 | 40 | 196.25 | 236.25 | 219.4097 | 259.4097 | 23.1597 | 0 | 2027-04-02T14:00 | 2027-05-12T14:00 |  |
| 37f02d2b-a09c-42a0-a4d2-d8af49495fce | 23 | Закупка: Сталь мостовая 15ХСНД | 8707dc41-153d-4fb5-a6e6-3bb24a71ff41 | 504 | 1 |  | 504 | 30240 | 63 дн | 0 | 504 | 934.6111111111112 | 1438.611111111111 | 934.6111111111112 | 749.3333333333334 | 8 | 63 | 0 | 63 | 116.8264 | 179.8264 | 116.8264 | 93.6667 | 2026-09-18T08:00 | 2026-11-20T08:00 |  |
| 1200d02a-f0b2-416a-8f49-35ce2c1f5084 | 16 | Закупка: Металлизация покрытия | 8707dc41-153d-4fb5-a6e6-3bb24a71ff41 | 288 | 1 |  | 288 | 17280 | 36 дн | 0 | 288 | 1150.611111111111 | 1438.611111111111 | 1150.611111111111 | 965.3333333333334 | 8 | 36 | 0 | 36 | 143.8264 | 179.8264 | 143.8264 | 120.6667 | 2026-09-18T08:00 | 2026-10-24T08:00 |  |
| e3bfe1e6-2f9c-4b09-b001-8adfe498ede0 | 46 | Эстакада подходная · Надвижка эстакады | 8707dc41-153d-4fb5-a6e6-3bb24a71ff41 | 266.6666666666667 | 0.3 |  | 266.6667 | 16000 | 33 дн 2 ч 40 мин | 1890 | 2156.666666666667 | 2075.277777777778 | 2341.9444444444443 | 185.27777777777777 | 0 | 8 | 33.3333 | 236.25 | 269.5833 | 259.4097 | 292.7431 | 23.1597 | 0 | 2027-05-12T14:00 | 2027-06-14T22:00 |  |
| 048a5c6f-e436-4257-b1ea-9912172a4608 | 49 | Опоры эстакады · Монтаж стоек эстакады | 8707dc41-153d-4fb5-a6e6-3bb24a71ff41 | 90 | 0.5 |  | 90 | 5400 | 11 дн 2 ч | 2156.666666666667 | 2246.666666666667 | 2341.9444444444443 | 2431.9444444444443 | 185.27777777777777 | 0 | 8 | 11.25 | 269.5833 | 280.8333 | 292.7431 | 303.9931 | 23.1597 | 0 | 2027-06-14T22:00 | 2027-06-26T04:00 |  |
| e13249e8-a994-4cfd-80b5-3f38a78df45b | 2 | Закупка: Арматура А500С | 8707dc41-153d-4fb5-a6e6-3bb24a71ff41 | 96 | 1 |  | 96 | 5760 | 12 дн | 0 | 96 | 2245.9444444444443 | 2341.9444444444443 | 2245.9444444444443 | 2060.666666666667 | 8 | 12 | 0 | 12 | 280.7431 | 292.7431 | 280.7431 | 257.5833 | 2026-09-18T08:00 | 2026-09-30T08:00 |  |
| ff50ed0d-3ba0-49cb-9b22-743a54b22615 | 50 | Свайное поле эстакады · Забивка свай эстакады | 8707dc41-153d-4fb5-a6e6-3bb24a71ff41 | 130 | 0.5 |  | 130 | 7800 | 16 дн 2 ч | 2246.666666666667 | 2376.666666666667 | 2431.9444444444443 | 2561.9444444444443 | 185.27777777777777 | 0 | 8 | 16.25 | 280.8333 | 297.0833 | 303.9931 | 320.2431 | 23.1597 | 0 | 2027-06-26T04:00 | 2027-07-12T10:00 |  |
| e967fc01-5ff2-4abb-8120-7b01f97d3b41 | 52 | Свайное поле эстакады · Бетонирование ростверков | 8707dc41-153d-4fb5-a6e6-3bb24a71ff41 | 133.33333333333334 | 0.45 |  | 133.3333 | 8000 | 16 дн 5 ч 20 мин | 2376.666666666667 | 2510 | 2561.9444444444443 | 2695.277777777778 | 185.27777777777777 | 0 | 8 | 16.6667 | 297.0833 | 313.75 | 320.2431 | 336.9097 | 23.1597 | 0 | 2027-07-12T10:00 | 2027-07-29T02:00 |  |
| 91b5b627-8b66-4dd8-9a1b-dc0f43534a45 | 20 | Закупка: Сваи железобетонные | 8707dc41-153d-4fb5-a6e6-3bb24a71ff41 | 144 | 1 |  | 144 | 8640 | 18 дн | 0 | 144 | 2287.9444444444443 | 2431.9444444444443 | 2287.9444444444443 | 2102.666666666667 | 8 | 18 | 0 | 18 | 285.9931 | 303.9931 | 285.9931 | 262.8333 | 2026-09-18T08:00 | 2026-10-06T08:00 |  |
| f7d95c02-b4d5-465d-8a64-ccc5465d6046 | 55 | Пролёт эстакады · Сборка пролёта эстакады | 8707dc41-153d-4fb5-a6e6-3bb24a71ff41 | 233.33333333333334 | 0.3 |  | 233.3333 | 14000 | 29 дн 1 ч 20 мин | 2510 | 2743.3333333333335 | 2695.277777777778 | 2928.6111111111113 | 185.27777777777777 | 0 | 8 | 29.1667 | 313.75 | 342.9167 | 336.9097 | 366.0764 | 23.1597 | 0 | 2027-07-29T02:00 | 2027-08-27T06:00 |  |
| a2ff72a6-4be1-4aeb-83da-91620d2009a4 | 58 | Пролёт эстакады · Сварка пролёта эстакады | 8707dc41-153d-4fb5-a6e6-3bb24a71ff41 | 240 | 0.25 |  | 240 | 14400 | 30 дн | 2743.3333333333335 | 2983.3333333333335 | 2928.6111111111113 | 3168.6111111111113 | 185.27777777777777 | 0 | 8 | 30 | 342.9167 | 372.9167 | 366.0764 | 396.0764 | 23.1597 | 0 | 2027-08-27T06:00 | 2027-09-26T06:00 |  |
| c2508b97-d076-4040-a005-f1f4a5a70266 | 61 | Обустройство и подходы · Устройство тротуаров | 8707dc41-153d-4fb5-a6e6-3bb24a71ff41 | 208.33333333333334 | 0.24 |  | 208.3333 | 12500 | 26 дн 20 мин | 2983.3333333333335 | 3191.666666666667 | 3168.6111111111113 | 3376.9444444444443 | 185.27777777777777 | 0 | 8 | 26.0417 | 372.9167 | 398.9583 | 396.0764 | 422.1181 | 23.1597 | 0 | 2027-09-26T06:00 | 2027-10-22T07:00 |  |
| c8746c57-e28e-4a66-b821-eed81b445a0a | 64 | Обустройство и подходы · Укладка ЩМА подходов | 8707dc41-153d-4fb5-a6e6-3bb24a71ff41 | 187.5 | 0.24 |  | 187.5 | 11250 | 23 дн 3 ч 30 мин | 3191.666666666667 | 3379.166666666667 | 3376.9444444444443 | 3564.4444444444443 | 185.27777777777777 | 0 | 8 | 23.4375 | 398.9583 | 422.3958 | 422.1181 | 445.5556 | 23.1597 | 0 | 2027-10-22T07:00 | 2027-11-14T17:30 |  |
| 7901b91a-90a1-4005-bda8-e31d2b4be69a | 66 | Обустройство и подходы · Монтаж ограждений | 8707dc41-153d-4fb5-a6e6-3bb24a71ff41 | 140 | 0.25 |  | 140 | 8400 | 17 дн 4 ч | 3379.166666666667 | 3519.166666666667 | 3564.4444444444443 | 3704.4444444444443 | 185.27777777777777 | 0 | 8 | 17.5 | 422.3958 | 439.8958 | 445.5556 | 463.0556 | 23.1597 | 0 | 2027-11-14T17:30 | 2027-12-02T05:30 |  |
| 9a56ea92-470e-42d1-a85b-8cbf16577122 | 67 | Обустройство и подходы · Монтаж освещения и АСУ | 8707dc41-153d-4fb5-a6e6-3bb24a71ff41 | 160 | 0.25 |  | 160 | 9600 | 20 дн | 3519.166666666667 | 3679.166666666667 | 3704.4444444444443 | 3864.4444444444443 | 185.27777777777777 | 0 | 8 | 20 | 439.8958 | 459.8958 | 463.0556 | 483.0556 | 23.1597 | 0 | 2027-12-02T05:30 | 2027-12-22T05:30 |  |
| adb6fa25-cf37-46a5-98d1-754b04c2e1b3 | 69 | Обустройство и подходы · Пусконаладка и сдача | 8707dc41-153d-4fb5-a6e6-3bb24a71ff41 | 104.16666666666667 | 0.24 |  | 104.1667 | 6250 | 13 дн 10 мин | 3679.166666666667 | 3783.3333333333335 | 3864.4444444444443 | 3968.6111111111113 | 185.27777777777777 | 185.27777777777777 | 8 | 13.0208 | 459.8958 | 472.9167 | 483.0556 | 496.0764 | 23.1597 | 23.1597 | 2027-12-22T05:30 | 2028-01-04T06:00 |  |
| 8a945ee5-9ffc-4d39-827d-8d2a5595a637 | 24 | Закупка: Тротуарные плиты | 8707dc41-153d-4fb5-a6e6-3bb24a71ff41 | 240 | 1 |  | 240 | 14400 | 30 дн | 0 | 240 | 2928.6111111111113 | 3168.6111111111113 | 2928.6111111111113 | 2743.3333333333335 | 8 | 30 | 0 | 30 | 366.0764 | 396.0764 | 366.0764 | 342.9167 | 2026-09-18T08:00 | 2026-10-18T08:00 |  |
| 0bfcfaf2-6938-4b69-8d07-2c051d824fdf | 5 | Закупка: Асфальтобетон ЩМА | 8707dc41-153d-4fb5-a6e6-3bb24a71ff41 | 48 | 1 |  | 48 | 2880 | 6 дн | 0 | 48 | 2993.1111111111113 | 3041.1111111111113 | 2993.1111111111113 | 2935.3333333333335 | 8 | 6 | 0 | 6 | 374.1389 | 380.1389 | 374.1389 | 366.9167 | 2026-09-18T08:00 | 2026-09-24T08:00 |  |
| 8cd89dfb-7174-40d9-b00f-708656e5fd19 | 19 | Закупка: Освещение и АСУ | 8707dc41-153d-4fb5-a6e6-3bb24a71ff41 | 1080 | 1 |  | 1080 | 64800 | 135 дн | 0 | 1080 | 2088.6111111111113 | 3168.6111111111113 | 2088.6111111111113 | 1903.3333333333335 | 8 | 135 | 0 | 135 | 261.0764 | 396.0764 | 261.0764 | 237.9167 | 2026-09-18T08:00 | 2027-01-31T08:00 |  |
